# Software Development

Schedule from MS Project, 2024-03-11 to 2024-08-06.

## Calendars

- Standard: Mon-Fri 08:00-12:00, 13:00-17:00; Sat-Sun off.

## Schedule

| ID | WBS | Task | Type | Duration | Start | Finish | Predecessors | Total slack | Work |
| --- | --- | --- | --- | --- | --- | --- | --- | --- | --- |
| 1 | 1 | **Scope** |  | 3.5d | 2024-03-11 | 2024-03-14 |  | 0d | 28h |
| 2 | 1.1 | Determine project scope |  | 4h | 2024-03-11 | 2024-03-11 |  | 0d | 4h |
| 3 | 1.2 | Secure project sponsorship |  | 1d | 2024-03-11 | 2024-03-12 | 2 | 0d | 8h |
| 4 | 1.3 | Define preliminary resources |  | 1d | 2024-03-12 | 2024-03-13 | 3 | 0d | 8h |
| 5 | 1.4 | Secure core resources |  | 1d | 2024-03-13 | 2024-03-14 | 4 | 0d | 8h |
| 6 | 1.5 | Scope complete | milestone | 0d | 2024-03-14 | 2024-03-14 | 5 | 0d |  |
| 7 | 2 | **Analysis/Software Requirements** |  | 14d | 2024-03-14 | 2024-04-03 |  | 0d | 120h |
| 8 | 2.1 | Conduct needs analysis |  | 5d | 2024-03-14 | 2024-03-21 | 6 | 0d | 40h |
| 9 | 2.2 | Draft preliminary software specifications |  | 3d | 2024-03-21 | 2024-03-26 | 8 | 0d | 24h |
| 10 | 2.3 | Develop preliminary budget |  | 2d | 2024-03-26 | 2024-03-28 | 9 | 0d | 16h |
| 11 | 2.4 | Review software specifications/budget with team |  | 4h | 2024-03-28 | 2024-03-28 | 10 | 0d | 8h |
| 12 | 2.5 | Incorporate feedback on software specifications |  | 1d | 2024-03-29 | 2024-03-29 | 11 | 0d | 8h |
| 13 | 2.6 | Develop delivery timeline |  | 1d | 2024-04-01 | 2024-04-01 | 12 | 0d | 8h |
| 14 | 2.7 | Obtain approvals to proceed (concept, timeline, budget) |  | 4h | 2024-04-02 | 2024-04-02 | 13 | 0d | 8h |
| 15 | 2.8 | Secure required resources |  | 1d | 2024-04-02 | 2024-04-03 | 14 | 0d | 8h |
| 16 | 2.9 | Analysis complete | milestone | 0d | 2024-04-03 | 2024-04-03 | 15 | 0d |  |
| 17 | 3 | **Design** |  | 14.5d | 2024-04-03 | 2024-04-23 |  | 0d | 120h |
| 18 | 3.1 | Review preliminary software specifications |  | 2d | 2024-04-03 | 2024-04-05 | 16 | 0d | 16h |
| 19 | 3.2 | Develop functional specifications |  | 5d | 2024-04-05 | 2024-04-12 | 18 | 0d | 40h |
| 20 | 3.3 | Develop prototype based on functional specifications |  | 4d | 2024-04-12 | 2024-04-18 | 19 | 0d | 32h |
| 21 | 3.4 | Review functional specifications |  | 2d | 2024-04-18 | 2024-04-22 | 20 | 0d | 16h |
| 22 | 3.5 | Incorporate feedback into functional specifications |  | 1d | 2024-04-22 | 2024-04-23 | 21 | 0d | 8h |
| 23 | 3.6 | Obtain approval to proceed |  | 4h | 2024-04-23 | 2024-04-23 | 22 | 0d | 8h |
| 24 | 3.7 | Design complete | milestone | 0d | 2024-04-23 | 2024-04-23 | 23 | 0d |  |

| ID | WBS | Task | Type | Duration | Start | Finish | Predecessors | Total slack | Free slack | Work |
| --- | --- | --- | --- | --- | --- | --- | --- | --- | --- | --- |
| 25 | 4 | **Development** |  | 33d | 2024-04-24 | 2024-06-07 |  | 0d |  | 264h |
| 26 | 4.1 | Review functional specifications |  | 1d | 2024-04-24 | 2024-04-24 | 24 | 0d |  | 8h |
| 27 | 4.2 | Identify modular/tiered design parameters |  | 1d | 2024-04-25 | 2024-04-25 | 26 | 0d |  | 8h |
| 28 | 4.3 | Assign development staff |  | 1d | 2024-04-26 | 2024-04-26 | 27 | 0d |  | 8h |
| 29 | 4.4 | Develop code |  | 15d | 2024-04-29 | 2024-05-17 | 28 | 0d |  | 120h |
| 30 | 4.5 | Developer testing (primary debugging) |  | 15d | 2024-05-20 | 2024-06-07 | 29FS-7.5% | 0d |  | 120h |
| 31 | 4.6 | Development complete | milestone | 0d | 2024-06-07 | 2024-06-07 | 30 | 0d |  |  |
| 32 | 5 | **Testing** |  | 60d | 2024-04-24 | 2024-07-16 |  | 15d |  | 280h |
| 33 | 5.1 | Develop unit test plans using product specifications |  | 4d | 2024-04-24 | 2024-04-29 | 24 | 29d |  | 32h |
| 34 | 5.2 | Develop integration test plans using product specifications |  | 4d | 2024-04-30 | 2024-05-03 | 24 | 67d |  | 32h |
| 35 | 5.3 | **Unit Testing** |  | 15d | 2024-06-10 | 2024-06-28 |  | 0d |  | 120h |
| 36 | 5.3.1 | Review modular code |  | 5d | 2024-06-10 | 2024-06-14 | 33, 31 | 0d |  | 40h |
| 37 | 5.3.2 | Test component modules to product specifications |  | 2d | 2024-06-17 | 2024-06-18 | 31, 36 | 0d |  | 16h |
| 38 | 5.3.3 | Identify anomalies to product specifications |  | 3d | 2024-06-19 | 2024-06-21 | 37 | 0d |  | 24h |
| 39 | 5.3.4 | Modify code |  | 3d | 2024-06-24 | 2024-06-26 | 38 | 0d |  | 24h |
| 40 | 5.3.5 | Re-test modified code |  | 2d | 2024-06-27 | 2024-06-28 | 39 | 0d |  | 16h |
| 41 | 5.3.6 | Unit testing complete | milestone | 0d | 2024-06-28 | 2024-06-28 | 40 | 0d |  |  |
| 42 | 5.4 | **Integration Testing** |  | 12d | 2024-07-01 | 2024-07-16 |  | 0d |  | 96h |
| 43 | 5.4.1 | Test module integration |  | 5d | 2024-07-01 | 2024-07-05 | 41 | 0d |  | 40h |
| 44 | 5.4.2 | Identify anomalies to specifications |  | 2d | 2024-07-08 | 2024-07-09 | 43 | 0d |  | 16h |
| 45 | 5.4.3 | Modify code |  | 3d | 2024-07-10 | 2024-07-12 | 44 | 0d |  | 24h |
| 46 | 5.4.4 | Re-test modified code |  | 2d | 2024-07-15 | 2024-07-16 | 45 | 0d |  | 16h |
| 47 | 5.4.5 | Integration testing complete | milestone | 0d | 2024-07-16 | 2024-07-16 | 46 | 0d |  |  |
| 48 | 6 | **Training** |  | 57d | 2024-04-24 | 2024-07-11 |  | 3d |  | 256h |
| 49 | 6.1 | Develop training specifications for end users |  | 3d | 2024-04-24 | 2024-04-26 | 24 | 33d | 30d | 24h |
| 50 | 6.2 | Develop training specifications for helpdesk support staff |  | 3d | 2024-04-29 | 2024-05-01 | 24 | 30d | 27d | 24h |
| 51 | 6.3 | Identify training delivery methodology (computer based training, classroom, etc.) |  | 2d | 2024-05-02 | 2024-05-03 | 24 | 28d | 25d | 16h |
| 52 | 6.4 | Develop training materials |  | 3w | 2024-06-10 | 2024-06-28 | 49, 31, 50, 51 | 3d | 0d | 120h |
| 53 | 6.5 | Conduct training usability study |  | 4d | 2024-07-01 | 2024-07-04 | 52 | 3d | 0d | 32h |
| 54 | 6.6 | Finalize training materials |  | 3d | 2024-07-05 | 2024-07-09 | 53 | 3d | 0d | 24h |
| 55 | 6.7 | Develop training delivery mechanism |  | 2d | 2024-07-10 | 2024-07-11 | 54 | 3d | 0d | 16h |
| 56 | 6.8 | Training materials complete | milestone | 0d | 2024-07-11 | 2024-07-11 | 55 | 3d |  |  |

| ID | WBS | Task | Type | Duration | Start | Finish | Predecessors | Total slack | Free slack | Work |
| --- | --- | --- | --- | --- | --- | --- | --- | --- | --- | --- |
| 57 | 7 | **Documentation** |  | 49d | 2024-04-24 | 2024-07-01 |  | 11d |  | 336h |
| 58 | 7.1 | Develop Help specification |  | 1d | 2024-04-24 | 2024-04-24 | 24 | 22.5d | 9.5d | 8h |
| 59 | 7.2 | Develop Help system |  | 3w | 2024-05-08 | 2024-05-29 | 58, 29FS-5% | 13d | 0d | 120h |
| 60 | 7.3 | Review Help documentation |  | 3d | 2024-06-19 | 2024-06-21 | 59 | 13d | 0d | 24h |
| 61 | 7.4 | Incorporate Help documentation feedback |  | 2d | 2024-06-28 | 2024-07-01 | 60 | 11d | 0d | 16h |
| 62 | 7.5 | Develop user manuals specifications |  | 2d | 2024-04-25 | 2024-04-26 | 24 | 20.5d | 7.5d | 16h |
| 63 | 7.6 | Develop user manuals |  | 3w | 2024-05-08 | 2024-06-18 | 62, 29FS-5% | 13d | 0d | 120h |
| 64 | 7.7 | Review all user documentation |  | 2d | 2024-06-24 | 2024-06-25 | 63 | 13d | 0d | 16h |
| 65 | 7.8 | Incorporate user documentation feedback |  | 2d | 2024-06-26 | 2024-06-27 | 64 | 13d | 2d | 16h |
| 66 | 7.9 | Documentation complete | milestone | 0d | 2024-07-01 | 2024-07-01 | 65, 61 | 11d |  |  |
| 67 | 8 | **Pilot** |  | 81.5d | 2024-04-03 | 2024-07-25 |  | 0d |  | 64h |
| 68 | 8.1 | Identify test group |  | 1d | 2024-04-03 | 2024-04-04 | 16 | 72.5d | 0d | 8h |
| 69 | 8.2 | Develop software delivery mechanism |  | 1d | 2024-04-04 | 2024-04-05 | 68 | 72.5d |  |  |
| 70 | 8.3 | Install/deploy software |  | 1d | 2024-07-17 | 2024-07-17 | 47, 69, 66, 56 | 0d |  | 8h |
| 71 | 8.4 | Obtain user feedback |  | 1w | 2024-07-18 | 2024-07-24 | 70 | 0d |  | 40h |
| 72 | 8.5 | Evaluate testing information |  | 1d | 2024-07-25 | 2024-07-25 | 71 | 0d |  | 8h |
| 73 | 8.6 | Pilot complete | milestone | 0d | 2024-07-25 | 2024-07-25 | 72 | 0d |  |  |
| 74 | 9 | **Deployment** |  | 5d | 2024-07-26 | 2024-08-01 |  | 0d |  | 40h |
| 75 | 9.1 | Determine final deployment strategy |  | 1d | 2024-07-26 | 2024-07-26 | 73 | 0d |  | 8h |
| 76 | 9.2 | Develop deployment methodology |  | 1d | 2024-07-29 | 2024-07-29 | 75 | 0d |  | 8h |
| 77 | 9.3 | Secure deployment resources |  | 1d | 2024-07-30 | 2024-07-30 | 76 | 0d |  | 8h |
| 78 | 9.4 | Train support staff |  | 1d | 2024-07-31 | 2024-07-31 | 77 | 0d |  | 8h |
| 79 | 9.5 | Deploy software |  | 1d | 2024-08-01 | 2024-08-01 | 78 | 0d |  | 8h |
| 80 | 9.6 | Deployment complete | milestone | 0d | 2024-08-01 | 2024-08-01 | 79 | 0d |  |  |

| ID | WBS | Task | Type | Duration | Start | Finish | Predecessors | Total slack | Work |
| --- | --- | --- | --- | --- | --- | --- | --- | --- | --- |
| 81 | 10 | **Post Implementation Review** |  | 3d | 2024-08-02 | 2024-08-06 |  | 0d | 24h |
| 82 | 10.1 | Document lessons learned |  | 1d | 2024-08-02 | 2024-08-02 | 80 | 0d | 8h |
| 83 | 10.2 | Distribute to team members |  | 1d | 2024-08-05 | 2024-08-05 | 82 | 0d | 8h |
| 84 | 10.3 | Create software maintenance team |  | 1d | 2024-08-06 | 2024-08-06 | 83 | 0d | 8h |
| 85 | 10.4 | Post implementation review complete | milestone | 0d | 2024-08-06 | 2024-08-06 | 84 | 0d |  |
| 86 | 11 | Software development template complete | milestone | 0d | 2024-08-06 | 2024-08-06 | 85 | 0d |  |
